Schedule from MS Project, 2024-01-22 to 2024-02-23, costs in $.

## Calendars

- Standard: Mon-Fri 08:00-12:00, 13:00-17:00; Sat-Sun off.

## Resources

| Resource | Unit | Rate |
| --- | --- | --- |
| Yel |  | 25 |
| Refas |  | 25 |
| Tecan |  | 100 |
| Spark |  | 38 |
| Steel Plate | Sheet | 35 |
| Wood | Board Feet | 5 |
| Nails | Boxes | 10 |
| Screws | Boxes | 15 |
| Clips | Pieces | 2 |
| Steel Cables | Rolls | 50 |
| Wooden Planks | Pieces | 15 |
| Connectors | Sets | 25 |
| Hoist Rental |  |  |
| Concrete | Cubic Yards | 80 |
| Paints and Stains | Gallons | 20 |
| Waterproof Sealant | Gallons | 25 |
| Insulation Material | Rolls | 30 |
| LED Lighting | Sets | 40 |
| Glass Windows | Pieces | 95 |
| Roofing Shingles | Bundles | 25 |
| Ladder |  |  |
| Safety Harnesses |  |  |
| Miscellaneous Hardware Chest Refills |  |  |
| Staples | Boxes | 8 |
| Wires | Rolls | 18 |
| Plywood Sheets | Sheets | 25 |
| Sand | Cubic Yards | 50 |
| Varnish | Gallons | 22 |
| Light switches | Pieces | 12 |
| Lumber (2x4) | Board Feet | 6 |
| Architect |  | 110 |

## Schedule

| ID | WBS | Task | Type | Duration | Start | Finish | Predecessors | Baseline start | Baseline finish | Baseline duration | Total slack | Free slack | Constraint | Resources | Work | Cost | Baseline cost |
| --- | --- | --- | --- | --- | --- | --- | --- | --- | --- | --- | --- | --- | --- | --- | --- | --- | --- |
| 1 | 1 | **Project Build Treehouse (Bunkie)** |  | 25d | 2024-01-22 | 2024-02-23 |  | 2024-01-22 | 2024-02-23 | 25d | 0d |  |  |  | 223h | 22,580 | 22,580 |
| 2 | 1.1 | **Preparation** |  | 8d | 2024-01-22 | 2024-01-31 |  | 2024-01-22 | 2024-01-31 | 8d | 0d |  |  |  | 69h | 6,610 | 6,610 |
| 3 | 1.1.1 | **Design Treehouse** |  | 4d | 2024-01-22 | 2024-01-25 |  | 2024-01-22 | 2024-01-25 | 4d | 0d |  |  |  | 32h | 3,360 | 3,360 |
| 4 | 1.1.1.1 | Research and sketch treehouse |  | 4d | 2024-01-22 | 2024-01-25 |  | 2024-01-22 | 2024-01-25 | 4d | 0d |  |  | Tecan [50%] | 16h | 1,600 | 1,600 |
| 5 | 1.1.1.2 | Engage architect for custom design |  | 2d | 2024-01-24 | 2024-01-25 | 4FS-2d | 2024-01-24 | 2024-01-25 | 2d | 0d |  |  | Architect | 16h | 1,760 | 1,760 |
| 6 | 1.1.1.3 | Finalize treehouse design | milestone | 0d | 2024-01-25 | 2024-01-25 | 4, 5 | 2024-01-25 | 2024-01-25 | 0d | 9d |  |  |  |  |  |  |
| 7 | 1.1.2 | **Resource and Cost Planning** |  | 2d | 2024-01-26 | 2024-01-29 |  | 2024-01-26 | 2024-01-29 | 2d | 0d |  |  |  | 8h | 800 | 800 |
| 8 | 1.1.2.1 | Identify materials and estimates cost |  | 2d | 2024-01-26 | 2024-01-29 | 5 | 2024-01-26 | 2024-01-29 | 2d | 0d |  |  | Tecan [25%] | 4h | 400 | 400 |
| 9 | 1.1.2.2 | Develop resource and cost plan |  | 1d | 2024-01-29 | 2024-01-29 | 8FS-1d | 2024-01-29 | 2024-01-29 | 1d | 0d |  |  | Tecan [50%] | 4h | 400 | 400 |
| 10 | 1.1.2.3 | Resource and cost planning complete | milestone | 0d | 2024-01-29 | 2024-01-29 | 8, 9 | 2024-01-29 | 2024-01-29 | 0d | 19d | 2d |  |  |  |  |  |
| 11 | 1.1.3 | **Project Kick-off** |  | 2d | 2024-01-30 | 2024-01-31 |  | 2024-01-30 | 2024-01-31 | 2d | 0d |  |  |  | 29h | 2,450 | 2,450 |
| 12 | 1.1.3.1 | Review goals, scope, and timelines |  | 2d | 2024-01-30 | 2024-01-31 | 9, 4, 5 | 2024-01-30 | 2024-01-31 | 2d | 0d |  |  | Tecan [93.8%] | 15h | 1,500 | 1,500 |
| 13 | 1.1.3.2 | Conduct project kick-off meeting |  | 1d | 2024-01-31 | 2024-01-31 | 12FS-1d | 2024-01-31 | 2024-01-31 | 1d | 0d |  |  | Tecan; Yel [50%]; Refas [25%] | 14h | 950 | 950 |
| 14 | 1.1.3.3 | Preparation complete | milestone | 0d | 2024-01-31 | 2024-01-31 | 12, 13, 10 | 2024-01-31 | 2024-01-31 | 0d | 17d | 4d |  |  |  |  |  |
| 15 | 1.2 | **Execution** |  | 13d | 2024-01-30 | 2024-02-15 |  | 2024-01-30 | 2024-02-15 | 13d | 0d |  |  |  | 86h | 10,890 | 10,890 |
| 16 | 1.2.1 | **Buying Resources** |  | 6d | 2024-01-30 | 2024-02-06 |  | 2024-01-30 | 2024-02-06 | 6d | 0d |  |  |  | 24h | 7,798 | 7,798 |
| 17 | 1.2.1.1 | Get quotations and select suppliers |  | 2d | 2024-01-30 | 2024-01-31 | 9 | 2024-01-30 | 2024-01-31 | 2d | 0d |  |  | Tecan [50%] | 8h | 800 | 800 |
| 18 | 1.2.1.2 | Purchase materials & equipments |  | 4d | 2024-02-01 | 2024-02-06 | 17, 13 | 2024-02-01 | 2024-02-06 | 4d | 0d |  |  | Clips [50 Pieces]; Concrete [6 Cubic Yards]; Connectors [3 Sets]; Glass Windows [6 Pieces]; Hoist Rental [0.1%]; Insulation Material [4 Rolls]; Ladder [0.1%]; LED Lighting [7 Sets]; Light switches [6 Pieces]; Lumber (2x4) [40 Board Feet]; Miscellaneous Hardware Chest Refills [0.1%]; Nails [5 Boxes]; Paints and Stains [8 Gallons]; Plywood Sheets [15 Sheets]; Roofing Shingles [8 Bundles]; Safety Harnesses [0.1%]; Sand [2 Cubic Yards]; Screws [8 Boxes]; Staples [3 Boxes]; Steel Cables [6 Rolls]; Steel Plate [18 Sheet]; Varnish [4 Gallons]; Waterproof Sealant [5 Gallons]; Wires [3 Rolls]; Wood [75 Board Feet]; Wooden Planks [20 Pieces]; Tecan [50%] | 16h | 6,998 | 6,998 |
| 19 | 1.2.1.3 | Resources acquisition complete | milestone | 0d | 2024-02-06 | 2024-02-06 | 18, 14 | 2024-02-06 | 2024-02-06 | 0d | 13d | 7d |  |  |  |  |  |
| 20 | 1.2.2 | **Custom Steel Bracket Construction** |  | 3d | 2024-02-05 | 2024-02-07 |  | 2024-02-05 | 2024-02-07 | 3d | 0d |  |  |  | 20h | 526 | 526 |
| 21 | 1.2.2.1 | Design bracket |  | 2d | 2024-02-05 | 2024-02-06 | 4, 5 | 2024-02-05 | 2024-02-06 | 2d | 0d |  | as late as possible | Refas [25%]; Yel [50%] | 12h | 300 | 300 |
| 22 | 1.2.2.2 | Fabricate custom brackets |  | 1d | 2024-02-07 | 2024-02-07 | 21, 18 | 2024-02-07 | 2024-02-07 | 1d | 0d |  |  | Refas [25%]; Yel [50%]; Spark [25%] | 8h | 226 | 226 |
| 23 | 1.2.3 | **Treehouse Construction** |  | 6d | 2024-02-08 | 2024-02-15 |  | 2024-02-08 | 2024-02-15 | 6d | 0d |  |  |  | 16h | 478 | 478 |
| 24 | 1.2.3.1 | Prepare site and build structure |  | 4d | 2024-02-08 | 2024-02-13 | 22 | 2024-02-08 | 2024-02-13 | 4d | 0d |  |  | Spark [18.8%] | 6h | 228 | 228 |
| 25 | 1.2.3.2 | Wall installation |  | 4d | 2024-02-12 | 2024-02-15 | 24FS-2d | 2024-02-12 | 2024-02-15 | 4d | 0d |  |  | Refas [12.5%] | 4h | 100 | 100 |
| 26 | 1.2.3.3 | Roof and floor installation |  | 4d | 2024-02-12 | 2024-02-15 | 24FS-2d | 2024-02-12 | 2024-02-15 | 4d | 0d |  |  | Refas [12.5%] | 4h | 100 | 100 |
| 27 | 1.2.3.4 | Interior finishing |  | 1d | 2024-02-15 | 2024-02-15 | 25FS-1d, 26FS-1d | 2024-02-15 | 2024-02-15 | 1d | 0d |  |  | Yel [25%] | 2h | 50 | 50 |
| 28 | 1.2.3.5 | Treehouse construction complete | milestone | 0d | 2024-02-15 | 2024-02-15 | 27, 19 | 2024-02-15 | 2024-02-15 | 0d | 6d |  |  |  |  |  |  |

Notes:
- 24: This is acceptable

| ID | WBS | Task | Type | Duration | Start | Finish | Predecessors | Baseline start | Baseline finish | Baseline duration | Total slack | Constraint | Resources | Work | Cost | Baseline cost |
| --- | --- | --- | --- | --- | --- | --- | --- | --- | --- | --- | --- | --- | --- | --- | --- | --- |
| 29 | 1.2.4 | **Suspension Bridge Construction** |  | 6d | 2024-02-08 | 2024-02-15 |  | 2024-02-08 | 2024-02-15 | 6d | 0d |  |  | 26h | 2,088 | 2,088 |
| 30 | 1.2.4.1 | Design and plan bridge |  | 2d | 2024-02-08 | 2024-02-09 | 6 | 2024-02-08 | 2024-02-09 | 2d | 0d | as late as possible | Architect | 16h | 1,760 | 1,760 |
| 31 | 1.2.4.2 | Bridge construction |  | 4d | 2024-02-12 | 2024-02-15 | 30, 18 | 2024-02-12 | 2024-02-15 | 4d | 0d |  | Yel [12.5%]; Spark [18.8%] | 10h | 328 | 328 |
| 32 | 1.2.4.3 | Bridge construction complete | milestone | 0d | 2024-02-15 | 2024-02-15 | 31, 19 | 2024-02-15 | 2024-02-15 | 0d | 6d |  |  |  |  |  |
| 33 | 1.3 | **Monitoring and Controlling** |  | 6d | 2024-02-16 | 2024-02-23 |  | 2024-02-16 | 2024-02-23 | 6d | 0d |  |  | 56h | 3,880 | 3,880 |
| 34 | 1.3.1 | **Quality Control** |  | 4d | 2024-02-16 | 2024-02-21 |  | 2024-02-16 | 2024-02-21 | 4d | 0d |  |  | 32h | 3,280 | 3,280 |
| 35 | 1.3.1.1 | Inspect materials and workmanship |  | 4d | 2024-02-16 | 2024-02-21 | 27, 31 | 2024-02-16 | 2024-02-21 | 4d | 0d |  | Tecan [75%] | 24h | 2,400 | 2,400 |
| 36 | 1.3.1.2 | Ensure adherence to safety regulations |  | 1d | 2024-02-16 | 2024-02-16 | 27, 31 | 2024-02-16 | 2024-02-16 | 1d | 3d |  | Architect | 8h | 880 | 880 |
| 37 | 1.3.2 | **Issue Resolution** |  | 6d | 2024-02-16 | 2024-02-23 |  | 2024-02-16 | 2024-02-23 | 6d | 0d |  |  | 24h | 600 | 600 |
| 38 | 1.3.2.1 | Identify and resolve project issues |  | 4d | 2024-02-16 | 2024-02-21 | 27, 31 | 2024-02-16 | 2024-02-21 | 4d | 2d |  | Yel [50%] | 16h | 400 | 400 |
| 39 | 1.3.2.2 | Address quality issues |  | 4d | 2024-02-20 | 2024-02-23 | 35FS-2d, 36FS-2d | 2024-02-20 | 2024-02-23 | 4d | 0d |  | Refas [25%] | 8h | 200 | 200 |
| 40 | 1.3.2.3 | Inspections and controlling complete | milestone | 0d | 2024-02-23 | 2024-02-23 | 38, 39, 28, 32 | 2024-02-23 | 2024-02-23 | 0d | 0d |  |  |  |  |  |
| 41 | 1.4 | **Closing** |  | 1d | 2024-02-23 | 2024-02-23 |  | 2024-02-23 | 2024-02-23 | 1d | 0d |  |  | 12h | 1,200 | 1,200 |
| 42 | 1.4.1 | **Customer Acceptance & Project Closure** |  | 1d | 2024-02-23 | 2024-02-23 |  | 2024-02-23 | 2024-02-23 | 1d | 0d |  |  | 12h | 1,200 | 1,200 |
| 43 | 1.4.1.1 | Walkthrough with owner |  | 1d | 2024-02-23 | 2024-02-23 | 38FS-1d, 39FS-1d | 2024-02-23 | 2024-02-23 | 1d | 0d |  | Tecan [50%] | 4h | 400 | 400 |
| 44 | 1.4.1.2 | Review final outcome and end project |  | 1d | 2024-02-23 | 2024-02-23 | 43FS-1d | 2024-02-23 | 2024-02-23 | 1d | 0d |  | Tecan | 8h | 800 | 800 |

Notes:
- 31: This is acceptable
