# Assignment M6 Final - Gihan Shamike Liyanage

Schedule from MS Project, 2023-10-17 to 2023-11-24.

## Calendars

- Standard: Mon-Fri 08:00-12:00, 13:00-17:00; Sat-Sun off.

## Resources

| Resource |
| --- |
| Architect |
| Regulatory Specialist |
| Surveyor |
| Landscaping Team Member |
| Electrician |
| General Labour |
| Construction Worker |
| Erosion Control Specialist |
| Project Manager |

## Schedule

| ID | WBS | Task | Type | Duration | Start | Finish | Predecessors | Total slack | Free slack | Resources | Work |
| --- | --- | --- | --- | --- | --- | --- | --- | --- | --- | --- | --- |
| 1 | 1 | **Island Cottage Enhancement Project** |  | 29d | 2023-10-17 | 2023-11-24 |  | 0d |  |  | 672h |
| 2 | 1.1 | **Preparation** |  | 7d | 2023-10-17 | 2023-10-25 |  | 0d |  |  | 96h |
| 3 | 1.1.1 | **Planning and Design** |  | 3d | 2023-10-17 | 2023-10-19 |  | 0d |  |  | 40h |
| 4 | 1.1.1.1 | Design and plan outdoor amenities layout |  | 2d | 2023-10-17 | 2023-10-18 |  | 0d |  | Architect | 16h |
| 5 | 1.1.1.2 | Develop detailed blueprints |  | 1d | 2023-10-19 | 2023-10-19 | 4 | 0d |  | Architect | 8h |
| 6 | 1.1.1.3 | Apply and obtain Regulatory approvals |  | 2d | 2023-10-18 | 2023-10-19 | 5FS-2d | 0d |  | Regulatory Specialist | 16h |
| 7 | 1.1.2 | **Survey and Assessment** |  | 3d | 2023-10-19 | 2023-10-23 |  | 0d |  |  | 40h |
| 8 | 1.1.2.1 | Research erosion control methods |  | 1d | 2023-10-19 | 2023-10-19 | 6FS-1d | 0d |  | Erosion Control Specialist | 8h |
| 9 | 1.1.2.2 | Obtain quotes from erosion control specialists |  | 2d | 2023-10-20 | 2023-10-23 | 8 | 0d |  | Project Manager | 16h |
| 10 | 1.1.2.3 | Analyze survey results and assess erosion risk areas |  | 2d | 2023-10-20 | 2023-10-23 | 8 | 0d |  | Project Manager | 16h |
| 11 | 1.1.3 | **Project Kickoff** |  | 2d | 2023-10-24 | 2023-10-25 |  | 0d |  |  | 16h |
| 12 | 1.1.3.1 | Review Project Plan and Timeline |  | 1d | 2023-10-24 | 2023-10-24 | 4, 5, 6, 10, 9 | 0d |  | Project Manager | 8h |
| 13 | 1.1.3.2 | Officially launch the project. |  | 1d | 2023-10-25 | 2023-10-25 | 12 | 0d |  | Project Manager | 8h |
| 14 | 1.2 | **Buying Resources** |  | 6d | 2023-10-25 | 2023-11-01 |  | 0d |  |  | 96h |
| 15 | 1.2.1 | **Cost Estimation** |  | 2d | 2023-10-26 | 2023-10-27 |  | 0d |  |  | 16h |
| 16 | 1.2.1.1 | Estimate cost for outdoor amenities |  | 1d | 2023-10-26 | 2023-10-26 | 13 | 0d |  | Project Manager | 8h |
| 17 | 1.2.1.2 | Finalize cost |  | 1d | 2023-10-27 | 2023-10-27 | 16 | 0d |  | Project Manager | 8h |
| 18 | 1.2.2 | **Materials and Equipments** |  | 5d | 2023-10-25 | 2023-10-31 |  | 1d |  |  | 48h |
| 19 | 1.2.2.1 | Create a list of preferred suppliers |  | 2d | 2023-10-25 | 2023-10-26 | 17FS-3d | 1d | 0d | Project Manager | 16h |
| 20 | 1.2.2.2 | Get quotations from selected suppliers |  | 1d | 2023-10-27 | 2023-10-27 | 19 | 1d | 0d | Project Manager | 8h |
| 21 | 1.2.2.3 | Purchase materials |  | 1d | 2023-10-30 | 2023-10-30 | 20 | 1d | 0d | Project Manager | 8h |
| 22 | 1.2.2.4 | Procure equipments |  | 1d | 2023-10-30 | 2023-10-30 | 20 | 1d | 0d | Project Manager | 8h |
| 23 | 1.2.2.5 | Coordinate delivery |  | 1d | 2023-10-31 | 2023-10-31 | 21, 22 | 1d |  | Project Manager | 8h |
| 24 | 1.2.3 | **Manpower** |  | 3d | 2023-10-30 | 2023-11-01 |  | 0d |  |  | 32h |
| 25 | 1.2.3.1 | Select qualified contractor |  | 1d | 2023-10-30 | 2023-10-30 | 17 | 0d |  | Project Manager | 8h |
| 26 | 1.2.3.2 | Share detailed scope of work and expectations |  | 1d | 2023-10-31 | 2023-10-31 | 25 | 0d |  | Project Manager | 8h |
| 27 | 1.2.3.3 | Finalize contracts and agreements |  | 2d | 2023-10-31 | 2023-11-01 | 26FS-1d | 0d |  | Project Manager | 16h |
| 28 | 1.2.3.4 | Resources acquire complete | milestone | 0d | 2023-11-01 | 2023-11-01 | 17, 23, 27 | 0d |  |  |  |

| ID | WBS | Task | Duration | Start | Finish | Predecessors | Total slack | Free slack | Resources | Work |
| --- | --- | --- | --- | --- | --- | --- | --- | --- | --- | --- |
| 29 | 1.3 | **Construction** | 7d | 2023-11-02 | 2023-11-10 |  | 0d |  |  | 328h |
| 30 | 1.3.1 | **Stone Stairs** | 4d | 2023-11-02 | 2023-11-07 |  | 0d |  |  | 56h |
| 31 | 1.3.1.1 | Excavate the soil | 2d | 2023-11-02 | 2023-11-03 | 23, 27, 28 | 0d |  | Construction Worker | 16h |
| 32 | 1.3.1.2 | Build Stairs | 3d | 2023-11-03 | 2023-11-07 | 31FS-1d | 0d |  | Construction Worker | 24h |
| 33 | 1.3.1.3 | Grouting and Finishing | 2d | 2023-11-06 | 2023-11-07 | 32FF | 0d |  | Construction Worker | 16h |
| 34 | 1.3.2 | **Boat Dock 1** | 5d | 2023-11-02 | 2023-11-08 |  | 2d |  |  | 48h |
| 35 | 1.3.2.1 | Excavate the lakebed | 2d | 2023-11-02 | 2023-11-03 | 27 | 2d | 0d | Construction Worker | 24h |
| 36 | 1.3.2.2 | Assemble and install the dock structure | 2d | 2023-11-06 | 2023-11-07 | 35 | 2d | 0d | Construction Worker | 16h |
| 37 | 1.3.2.3 | Attach necessary accessories (bumpers, and safety ladders) | 1d | 2023-11-08 | 2023-11-08 | 36 | 2d |  | Construction Worker | 8h |
| 38 | 1.3.3 | **Boat Dock 2** | 4d | 2023-11-02 | 2023-11-07 |  | 3d |  |  | 56h |
| 39 | 1.3.3.1 | Excavate the lakebed | 2d | 2023-11-02 | 2023-11-03 | 27 | 3d | 0d | Construction Worker [200%] | 24h |
| 40 | 1.3.3.2 | Assemble and install the dock structure | 1d | 2023-11-06 | 2023-11-06 | 39 | 3d | 0d | Construction Worker | 24h |
| 41 | 1.3.3.3 | Attach necessary accessories (bumpers, and safety ladders) | 1d | 2023-11-07 | 2023-11-07 | 40 | 3d |  | Construction Worker | 8h |
| 42 | 1.3.4 | **Floating Dock** | 4d | 2023-11-02 | 2023-11-07 |  | 4d |  |  | 40h |
| 43 | 1.3.4.1 | Assemble the individual floating dock sections | 2d | 2023-11-02 | 2023-11-03 | 27 | 4d | 0d | Construction Worker | 16h |
| 44 | 1.3.4.2 | Install the necessary connectors and hinges | 2d | 2023-11-06 | 2023-11-07 | 43 | 4d | 0d | Construction Worker | 16h |
| 45 | 1.3.4.3 | Anchor the floating dock to the lakebed | 1d | 2023-11-06 | 2023-11-06 | 44SS | 4d |  | Construction Worker | 8h |
| 46 | 1.3.5 | **Tent Pitching Area** | 6d | 2023-11-02 | 2023-11-09 |  | 1d |  |  | 48h |
| 47 | 1.3.5.1 | Level the ground surface | 3d | 2023-11-02 | 2023-11-06 | 27 | 1d | 0d | Construction Worker | 24h |
| 48 | 1.3.5.2 | Install tent platforms | 2d | 2023-11-07 | 2023-11-08 | 47 | 12d |  | Construction Worker | 16h |
| 49 | 1.3.5.3 | Set up designated fire pit area | 1d | 2023-11-09 | 2023-11-09 | 47FS+2d | 1d |  | Construction Worker | 8h |
| 50 | 1.3.6 | **Rustic Swing Set** | 3d | 2023-11-08 | 2023-11-10 |  | 0d |  |  | 24h |
| 51 | 1.3.6.1 | Create frame | 2d | 2023-11-08 | 2023-11-09 | 33 | 0d |  | Construction Worker | 16h |
| 52 | 1.3.6.2 | Install swing set | 1d | 2023-11-10 | 2023-11-10 | 51 | 0d |  | Construction Worker | 8h |

Notes:
- 39: Crash one of the WP's to shorten the WP duration by shortening an identical activity.

| ID | WBS | Task | Type | Duration | Start | Finish | Predecessors | Total slack | Resources | Work |
| --- | --- | --- | --- | --- | --- | --- | --- | --- | --- | --- |
| 53 | 1.3.7 | **Erosion Control** |  | 7d | 2023-11-02 | 2023-11-10 |  | 0d |  | 56h |
| 54 | 1.3.7.1 | Install physical erosion control structures |  | 2d | 2023-11-02 | 2023-11-03 | 27 | 0d | General Labour | 16h |
| 55 | 1.3.7.2 | Plant erosion-resistant vegetation |  | 1d | 2023-11-06 | 2023-11-06 | 54 | 0d | General Labour | 8h |
| 56 | 1.3.7.3 | Monitor the effectiveness |  | 4d | 2023-11-07 | 2023-11-10 | 54, 55 | 0d | Erosion Control Specialist | 32h |
| 57 | 1.3.7.4 | Construction complete | milestone | 0d | 2023-11-10 | 2023-11-10 | 33, 37, 41, 45, 49, 52, 56 | 0d |  |  |
| 58 | 1.4 | **Final Touches** |  | 6d | 2023-11-13 | 2023-11-20 |  | 0d |  | 104h |
| 59 | 1.4.1 | **Lanscaping and Pathways** |  | 4d | 2023-11-13 | 2023-11-16 |  | 0d |  | 56h |
| 60 | 1.4.1.1 | Preparing soil |  | 1d | 2023-11-13 | 2023-11-13 | 33, 37, 41, 49, 52, 56, 57 | 0d | Landscaping Team Member | 8h |
| 61 | 1.4.1.2 | Plant native plants and shrubs for shoreline |  | 1d | 2023-11-14 | 2023-11-14 | 60 | 0d | Landscaping Team Member | 8h |
| 62 | 1.4.1.3 | Install irrigation system |  | 2d | 2023-11-14 | 2023-11-15 | 60 | 3d | Landscaping Team Member | 16h |
| 63 | 1.4.1.4 | Install hardscaping elements |  | 2d | 2023-11-15 | 2023-11-16 | 61 | 0d | Landscaping Team Member | 16h |
| 64 | 1.4.1.5 | Place outdoor decors |  | 1d | 2023-11-16 | 2023-11-16 | 63FS-1d | 0d | Landscaping Team Member | 8h |
| 65 | 1.4.2 | **Outdoor Lighting** |  | 2d | 2023-11-16 | 2023-11-17 |  | 0d |  | 32h |
| 66 | 1.4.2.1 | Install outdoor lighting along paths |  | 2d | 2023-11-16 | 2023-11-17 | 64FS-1d | 0d | Electrician | 16h |
| 67 | 1.4.2.2 | Install lights near recreational areas |  | 1d | 2023-11-17 | 2023-11-17 | 64 | 0d | Electrician | 8h |
| 68 | 1.4.2.3 | Install lights in tent pitching area |  | 1d | 2023-11-17 | 2023-11-17 | 64 | 0d | Electrician | 8h |
| 69 | 1.4.3 | **Cleaning and Grading** |  | 2d | 2023-11-17 | 2023-11-20 |  | 0d |  | 16h |
| 70 | 1.4.3.1 | Clear debris and unwanted vegetation |  | 1d | 2023-11-17 | 2023-11-17 | 66FS-1d, 67FS-1d, 68FS-1d | 0d | General Labour | 8h |
| 71 | 1.4.3.2 | Dispose debris |  | 1d | 2023-11-20 | 2023-11-20 | 70 | 0d | General Labour | 8h |
| 72 | 1.4.3.3 | Final touches complete | milestone | 0d | 2023-11-20 | 2023-11-20 | 64, 68, 71 | 0d |  |  |
| 73 | 1.5 | **Project End** |  | 4d | 2023-11-21 | 2023-11-24 |  | 0d |  | 48h |
| 74 | 1.5.1 | **Final Inspection** |  | 3d | 2023-11-21 | 2023-11-23 |  | 0d |  | 40h |
| 75 | 1.5.1.1 | Test outdoor lighting |  | 1d | 2023-11-21 | 2023-11-21 | 66, 67, 68, 72 | 1d | Electrician | 8h |
| 76 | 1.5.1.2 | Test irrigation system |  | 2d | 2023-11-21 | 2023-11-22 | 62, 72 | 0d | Landscaping Team Member | 16h |
| 77 | 1.5.1.3 | Check quality of construction work |  | 1d | 2023-11-23 | 2023-11-23 | 33, 37, 41, 45, 49, 52, 56, 75, 76 | 0d | Architect; Project Manager | 16h |

| ID | WBS | Task | Duration | Start | Finish | Predecessors | Total slack | Resources | Work |
| --- | --- | --- | --- | --- | --- | --- | --- | --- | --- |
| 78 | 1.5.2 | **Review Outcome** | 1d | 2023-11-24 | 2023-11-24 |  | 0d |  | 8h |
| 79 | 1.5.2.1 | Review final outcome and end project | 1d | 2023-11-24 | 2023-11-24 | 71, 77 | 0d | Project Manager | 8h |
