# DataAnalyticsLabPart1

Schedule from MS Project, 2023-11-06 to 2024-02-07, status date 2024-01-01, costs in $, A marks actual dates.

## Calendars

- Standard: Mon-Fri 08:00-12:00, 13:00-17:00; Sat-Sun off.

## Resources

| Resource | Unit | Rate |
| --- | --- | --- |
| Project Manager |  | 100 |
| IT Specialist |  | 80 |
| Software Specialist |  | 85 |
| Curriculum Developer |  | 90 |
| Analytics Specialist |  | 120 |
| Professor |  | 100 |
| Desktop Computers |  | 1200 |
| Routers |  | 220 |
| Switches |  | 150 |
| Ethernet Cable | Roll | 30 |
| Projectors |  | 650 |
| Licenses for Data Analysis Software |  |  |
| Operating System Licenses |  |  |
| UPS |  | 270 |
| Power Strips |  | 25 |
| Surge Protectors |  | 35 |
| USB Drives |  | 15 |

## Schedule

| ID | WBS | Task | Type | Duration | Start | Finish | Predecessors | Complete | Remaining | Baseline start | Baseline finish | Baseline duration | Total slack | Free slack | Constraint | Deadline | Resources | Work | Actual work | Cost | Baseline cost | Actual cost |
| --- | --- | --- | --- | --- | --- | --- | --- | --- | --- | --- | --- | --- | --- | --- | --- | --- | --- | --- | --- | --- | --- | --- |
| 1 | 1 | **Data Analytics Lab Project** |  | 68d | 2023-11-06 A | 2024-02-07 |  | 44% | 38.2d | 2023-11-06 | 2024-02-07 | 68d | 0d |  |  |  |  | 664h | 284h | 88,995 | 88,995 | 44,075 |
| 2 | 1.1 | **Equipped Data Analytics Lab with Computers and Software** |  | 36d | 2023-11-06 A | 2023-12-25 |  | 69% | 11.03d | 2023-11-06 | 2023-12-25 | 36d | 32d |  |  |  |  | 264h | 172h | 46,435 | 46,435 | 31,115 |
| 3 | 1.1.1 | **Needs Analysis and Procurement** |  | 11d | 2023-11-06 A | 2023-11-20 A |  | 100% |  | 2023-11-06 | 2023-11-20 | 11d |  |  |  |  |  | 96h | 96h | 32,315 | 32,315 | 24,915 |
| 4 | 1.1.1.1 | Conduct Needs Analysis |  | 3d | 2023-11-06 A | 2023-11-08 A |  | 100% |  | 2023-11-06 | 2023-11-08 | 3d |  |  |  |  | IT Specialist | 24h | 24h | 1,920 | 1,920 | 1,920 |
| 5 | 1.1.1.2 | Consult with Stakeholders |  | 1d | 2023-11-09 A | 2023-11-09 A | 4 | 100% |  | 2023-11-09 | 2023-11-09 | 1d |  |  |  |  | Project Manager | 8h | 8h | 800 | 800 | 800 |
| 6 | 1.1.1.3 | Research Latest Hardware and Software Technologies |  | 3d | 2023-11-09 A | 2023-11-13 A | 4 | 100% |  | 2023-11-09 | 2023-11-13 | 3d |  |  |  |  | IT Specialist | 24h | 24h | 1,920 | 1,920 | 1,920 |
| 7 | 1.1.1.4 | Prepare RFPs for Hardware and Software Procurement |  | 1d | 2023-11-14 A | 2023-11-14 A | 5, 6 | 100% |  | 2023-11-14 | 2023-11-14 | 1d |  |  |  |  | Project Manager | 8h | 8h | 800 | 800 | 800 |
| 8 | 1.1.1.5 | Evaluate Vendor Proposals and Select Suppliers |  | 2d | 2023-11-15 A | 2023-11-16 A | 7 | 100% |  | 2023-11-15 | 2023-11-16 | 2d |  |  |  |  | Project Manager | 16h | 16h | 1,600 | 1,600 | 1,600 |
| 9 | 1.1.1.6 | Purchase Hardware and Software |  | 1d | 2023-11-17 A | 2023-11-17 A | 8 | 100% |  | 2023-11-17 | 2023-11-17 | 1d |  |  | finish no later than 2023-11-18 |  | Project Manager; Desktop Computers [1000%]; Ethernet Cable [4 Roll]; Licenses for Data Analysis Software [0.1%]; Operating System Licenses [0.1%]; Power Strips [600%]; Projectors; Routers; Surge Protectors [600%]; Switches; UPS [1000%]; USB Drives [500%] | 8h | 8h | 24,475 | 24,475 | 17,075 |
| 10 | 1.1.1.7 | Coordinate delivery |  | 1d | 2023-11-20 A | 2023-11-20 A | 9 | 100% |  | 2023-11-20 | 2023-11-20 | 1d |  |  |  |  | Project Manager | 8h | 8h | 800 | 800 | 800 |
| 11 | 1.1.2 | **IT Infrastructure Setup and Training** |  | 25d | 2023-11-21 A | 2023-12-25 |  | 50% | 12.5d | 2023-11-21 | 2023-12-25 | 25d | 32d |  |  |  |  | 168h | 76h | 14,120 | 14,120 | 6,200 |
| 12 | 1.1.2.1 | Set Up Computer Workstations with Necessary Software |  | 3d | 2023-11-21 A | 2023-11-23 A | 9, 10 | 100% |  | 2023-11-21 | 2023-11-23 | 3d |  |  | must start on 2023-11-21 |  | Software Specialist | 24h | 24h | 2,040 | 2,040 | 2,040 |
| 13 | 1.1.2.2 | Configure Network Infrastructure |  | 5d | 2023-11-24 A | 2023-11-30 A | 12 | 100% |  | 2023-11-24 | 2023-11-30 | 5d |  |  |  |  | IT Specialist | 40h | 40h | 3,200 | 3,200 | 3,200 |
| 14 | 1.1.2.3 | Configure Security Protocols |  | 3d | 2023-12-04 A | 2023-12-06 | 13FS+1d | 50% | 1.5d | 2023-12-04 | 2023-12-06 | 3d | 0d |  |  |  | IT Specialist | 24h | 12h | 1,920 | 1,920 | 960 |
| 15 | 1.1.2.4 | Perform Hardware and Software Compatibility Tests |  | 1d | 2023-12-07 | 2023-12-07 | 14 |  |  | 2023-12-07 | 2023-12-07 | 1d | 0d |  |  |  | IT Specialist; Software Specialist | 16h |  | 1,320 | 1,320 |  |
| 16 | 1.1.2.5 | Address and Resolve Issues Identified During Testing |  | 1d | 2023-12-08 | 2023-12-08 | 15 |  |  | 2023-12-08 | 2023-12-08 | 1d | 0d |  |  |  | IT Specialist; Software Specialist | 16h |  | 1,320 | 1,320 |  |
| 17 | 1.1.2.6 | Lab Infrastructure Complete | milestone | 0d | 2023-12-08 | 2023-12-08 | 16, 12, 13, 14, 15 |  |  | 2023-12-08 | 2023-12-08 | 0d | 0d |  |  | 2023-12-08 |  |  |  |  |  |  |
| 18 | 1.1.2.7 | Develop User Manuals and Training Materials |  | 3d | 2023-12-06 | 2023-12-08 | 17FF |  |  | 2023-12-06 | 2023-12-08 | 3d | 40d | 0d |  |  | Curriculum Developer | 24h |  | 2,160 | 2,160 |  |
| 19 | 1.1.2.8 | **Conduct User Training Sessions for Students and Faculty** |  | 11d | 2023-12-11 | 2023-12-25 |  |  |  | 2023-12-11 | 2023-12-25 | 11d | 32d |  |  |  |  | 24h |  | 2,160 | 2,160 |  |
| 20 | 1.1.2.8.1 | Conduct User Training Sessions for Students and Faculty 1 |  | 1d | 2023-12-11 | 2023-12-11 | 18 |  |  | 2023-12-11 | 2023-12-11 | 1d | 40d | 4d | start no earlier than 2023-12-11 |  | Curriculum Developer | 8h |  | 720 | 720 |  |
| 21 | 1.1.2.8.2 | Conduct User Training Sessions for Students and Faculty 2 |  | 1d | 2023-12-18 | 2023-12-18 | 20 |  |  | 2023-12-18 | 2023-12-18 | 1d | 36d | 4d | start no earlier than 2023-12-18 |  | Curriculum Developer | 8h |  | 720 | 720 |  |
| 22 | 1.1.2.8.3 | Conduct User Training Sessions for Students and Faculty 3 |  | 1d | 2023-12-25 | 2023-12-25 | 21 |  |  | 2023-12-25 | 2023-12-25 | 1d | 32d |  | start no earlier than 2023-12-25 |  | Curriculum Developer | 8h |  | 720 | 720 |  |
| 23 | 1.2 | **Diverse Dataset Collection and Curation** |  | 17d | 2023-12-11 A | 2024-01-02 |  | 69% | 5.31d | 2023-12-11 | 2024-01-02 | 17d | 26d |  |  |  |  | 128h | 88h | 15,360 | 15,360 | 10,560 |
| 24 | 1.2.1 | **Data Sourcing and Acquisition** |  | 9d | 2023-12-11 A | 2023-12-21 |  | 50% | 4.5d | 2023-12-11 | 2023-12-21 | 9d | 0.75d |  |  |  |  | 72h | 36h | 8,640 | 8,640 | 4,320 |
| 25 | 1.2.1.1 | Research and Identify Potential Data Sources |  | 5d | 2023-12-11 A | 2023-12-15 | 17 | 50% | 2.5d | 2023-12-11 | 2023-12-15 | 5d | 0.5d | 0d |  |  | Analytics Specialist | 40h | 20h | 4,800 | 4,800 | 2,400 |
| 26 | 1.2.1.2 | Define Data Requirements and Criteria for Inclusion |  | 1d | 2023-12-18 A | 2023-12-18 | 25 | 50% | 0.5d | 2023-12-18 | 2023-12-18 | 1d | 0.5d | 0d |  |  | Analytics Specialist | 8h | 4h | 960 | 960 | 480 |
| 27 | 1.2.1.3 | Obtain Necessary Permissions and Licenses for Data Usage |  | 1d | 2023-12-19 A | 2023-12-19 | 26 | 50% | 0.5d | 2023-12-19 | 2023-12-19 | 1d | 1d | 0d |  |  | Analytics Specialist | 8h | 4h | 960 | 960 | 480 |
| 28 | 1.2.1.4 | Acquire Diverse Datasets from Various Sources |  | 2d | 2023-12-20 A | 2023-12-21 | 27 | 50% | 1d | 2023-12-20 | 2023-12-21 | 2d | 0.75d | 0d |  |  | Analytics Specialist | 16h | 8h | 1,920 | 1,920 | 960 |

Notes:
- 5: Engage in meaningful consultations with stakeholders to gather valuable insights and perspectives, fostering collaboration and aligning project goals with stakeholder expectations.
- 12: Install operating systems on lab computers. / Deploy data analysis software on each computer.
- 13: Set up network infrastructure, including Wi-Fi routers and LAN connections. / Configure routers and switches for network connectivity. / Set up VLANs for different lab sections.
- 18: Design interactive exercises and assignments. / Develop quizzes and assessments for evaluation.

| ID | WBS | Task | Type | Duration | Start | Finish | Predecessors | Complete | Remaining | Baseline start | Baseline finish | Baseline duration | Total slack | Free slack | Constraint | Deadline | Resources | Work | Actual work | Cost | Baseline cost | Actual cost |
| --- | --- | --- | --- | --- | --- | --- | --- | --- | --- | --- | --- | --- | --- | --- | --- | --- | --- | --- | --- | --- | --- | --- |
| 29 | 1.2.2 | **Data Preparation and Management** |  | 7d | 2023-12-25 A | 2024-01-02 |  | 93% | 0.5d | 2023-12-25 | 2024-01-02 | 7d | 26d |  |  |  |  | 56h | 52h | 6,720 | 6,720 | 6,240 |
| 30 | 1.2.2.1 | Cleanse Datasets to Remove Inconsistencies and Errors |  | 1d | 2023-12-25 A | 2023-12-25 | 28FS+1d | 75% | 0.25d | 2023-12-25 | 2023-12-25 | 1d | 0.75d | 0d |  |  | Analytics Specialist | 8h | 6h | 960 | 960 | 720 |
| 31 | 1.2.2.2 | Organize Datasets into Structured Formats |  | 1d | 2023-12-26 A | 2023-12-26 | 30 | 75% | 0.25d | 2023-12-26 | 2023-12-26 | 1d | 31d |  |  |  | Analytics Specialist | 8h | 6h | 960 | 960 | 720 |
| 32 | 1.2.2.3 | Document Metadata and Data Details for Each Dataset |  | 3d | 2023-12-27 A | 2023-12-29 A | 30, 31 | 100% |  | 2023-12-27 | 2023-12-29 | 3d |  |  |  |  | Analytics Specialist | 24h | 24h | 2,880 | 2,880 | 2,880 |
| 33 | 1.2.2.4 | Implement Data Versioning and Backup Procedures |  | 2d | 2024-01-01 A | 2024-01-02 A | 32 | 100% |  | 2024-01-01 | 2024-01-02 | 2d |  |  |  |  | Analytics Specialist | 16h | 16h | 1,920 | 1,920 | 1,920 |
| 34 | 1.2.2.5 | Dataset Preperation Complete | milestone | 0d | 2024-01-02 A | 2024-01-02 A | 30, 31, 32, 33 | 100% |  | 2024-01-02 | 2024-01-02 | 0d |  |  |  |  |  |  |  |  |  |  |
| 35 | 1.3 | **Student Projects and Reports Showcasing Data Analysis Skills** |  | 31d | 2023-12-27 A | 2024-02-07 |  | 9% | 28.26d | 2023-12-27 | 2024-02-07 | 31d | 0d |  |  |  |  | 272h | 24h | 27,200 | 27,200 | 2,400 |
| 36 | 1.3.1 | **Project Planning and Support Teams** |  | 12d | 2023-12-27 A | 2024-01-11 |  | 23% | 9.23d | 2023-12-27 | 2024-01-11 | 12d | 0d |  |  |  |  | 104h | 24h | 10,400 | 10,400 | 2,400 |
| 37 | 1.3.1.1 | Brainstorm Project Ideas and Topics |  | 3d | 2023-12-27 A | 2023-12-29 A | 34FF-1d, 20, 21, 22 | 100% |  | 2023-12-27 | 2024-01-01 | 4d |  |  |  |  | Professor | 24h | 24h | 2,400 | 3,200 | 2,400 |
| 38 | 1.3.1.2 | Develop Detailed Project Guidelines and Requirements |  | 2d | 2024-01-01 | 2024-01-02 | 37 |  |  | 2024-01-02 | 2024-01-03 | 2d | 0d |  |  |  | Professor | 16h |  | 1,600 | 1,600 |  |
| 39 | 1.3.1.3 | Assign Mentors and Project Supervisors to Student Teams |  | 1d | 2024-01-01 | 2024-01-01 | 38SS |  |  | 2024-01-02 | 2024-01-02 | 1d | 1d |  |  |  | Professor | 8h |  | 800 | 800 |  |
| 40 | 1.3.1.4 | Provide Research Resources and Technical Support to Students |  | 7d | 2024-01-03 | 2024-01-11 | 39, 38 |  |  | 2024-01-04 | 2024-01-11 | 6d | 0d |  |  |  | Professor | 56h |  | 5,600 | 4,800 |  |
| 41 | 1.3.2 | **Student Project Monitoring and Evaluation** |  | 19d | 2024-01-12 | 2024-02-07 |  |  |  | 2024-01-12 | 2024-02-07 | 19d | 0d |  |  |  |  | 168h |  | 16,800 | 16,800 |  |
| 42 | 1.3.2.1 | **Monitor Student Progress Through Regular Meetings** |  | 11d | 2024-01-12 | 2024-01-26 |  |  |  | 2024-01-12 | 2024-01-26 | 11d | 0d |  |  |  |  | 24h |  | 2,400 | 2,400 |  |
| 43 | 1.3.2.1.1 | Monitor Student Progress Through Regular Meetings 1 |  | 1d | 2024-01-12 | 2024-01-12 | 39, 40 |  |  | 2024-01-12 | 2024-01-12 | 1d | 0d |  | start no earlier than 2024-01-12 |  | Professor | 8h |  | 800 | 800 |  |
| 44 | 1.3.2.1.2 | Monitor Student Progress Through Regular Meetings 2 |  | 1d | 2024-01-19 | 2024-01-19 | 43 |  |  | 2024-01-19 | 2024-01-19 | 1d | 12d | 4d | start no earlier than 2024-01-19 |  | Professor | 8h |  | 800 | 800 |  |
| 45 | 1.3.2.1.3 | Monitor Student Progress Through Regular Meetings 3 |  | 1d | 2024-01-26 | 2024-01-26 | 44 |  |  | 2024-01-26 | 2024-01-26 | 1d | 8d |  | start no earlier than 2024-01-26 |  | Professor | 8h |  | 800 | 800 |  |
| 46 | 1.3.2.2 | Facilitate Peer Reviews and Collaborative Learning Sessions |  | 1d | 2024-01-15 | 2024-01-15 | 43 |  |  | 2024-01-15 | 2024-01-15 | 1d | 0d |  |  |  | Professor | 8h |  | 800 | 800 |  |
| 47 | 1.3.2.3 | Evaluate Student Projects Based on Criteria and Rubrics |  | 10d | 2024-01-16 | 2024-01-29 | 46 |  |  | 2024-01-16 | 2024-01-29 | 10d | 0d |  |  |  | Professor | 80h |  | 8,000 | 8,000 |  |
| 48 | 1.3.2.4 | Organize a Final Showcase Event for Project Presentations |  | 5d | 2024-01-30 | 2024-02-05 | 47 |  |  | 2024-01-30 | 2024-02-05 | 5d | 0d |  |  |  | Professor | 40h |  | 4,000 | 4,000 |  |
| 49 | 1.3.2.5 | Final Project Presentations |  | 2d | 2024-02-06 | 2024-02-07 | 48 |  |  | 2024-02-06 | 2024-02-07 | 2d | 0d |  | finish no later than 2024-02-07 |  | Professor | 16h |  | 1,600 | 1,600 |  |
| 50 | 1.3.2.6 | Project Completion | milestone | 0d | 2024-02-07 | 2024-02-07 | 49 |  |  | 2024-02-07 | 2024-02-07 | 0d | 0d |  |  | 2024-02-08 |  |  |  |  |  |  |

Notes:
- 30: Task to Cleanse Dataset
- 37: Engage in collaborative brainstorming sessions to generate innovative project ideas and topics, fostering creativity and setting the foundation for impactful student projects.
